# Cronograma_V7

Schedule from MS Project, 2016-08-15 to 2016-11-21, costs in R$, A marks actual dates.
Microsoft

## Calendars

- Padrão: Mon-Fri 08:00-12:00, 13:00-17:00; Sat-Sun off.

## Resources

| Resource | Rate |
| --- | --- |
| Cliente |  |
| Karen | 100 |
| Luana | 100 |
| Regiane | 100 |
| Gerente de Projeto | 100 |
| Vinícius | 100 |
| Pedro | 100 |

## Schedule

| ID | WBS | Task | Type | Duration | Start | Finish | Predecessors | Complete | Remaining | Actual start | Baseline start | Baseline finish | Baseline duration | Baseline 1 start | Baseline 1 finish | Constraint | Resources | Work | Actual work | Cost | Baseline cost | Actual cost |
| --- | --- | --- | --- | --- | --- | --- | --- | --- | --- | --- | --- | --- | --- | --- | --- | --- | --- | --- | --- | --- | --- | --- |
| 1 | 1 | **Projeto - Plataforma de Financiamento Coletivo da UNIFEI** |  | 71d | 2016-08-15 | 2016-11-21 |  | 49% | 36.32d | 2016-08-09 | 2016-08-15 | 2016-11-21 | 71d | 2016-08-15 | 2016-11-21 |  |  | 278.85h | 176.98h | 27,375.09 |  | 17,187.5 |
| 2 | 1.1 | **Prospecção** |  | 12d? | 2016-08-15 A | 2016-08-31 A |  | 100% |  |  | 2016-08-15 | 2016-08-31 | 12d? | 2016-08-15 | 2016-08-31 |  |  | 13.1h | 13.1h | 1,210 | 1,150 | 1,210 |
| 3 | 1.1.1 | **PTEC - Proposta Técnica** |  | 12d | 2016-08-15 A | 2016-08-30 A |  | 100% |  |  | 2016-08-15 | 2016-08-30 | 12d | 2016-08-15 | 2016-08-30 |  |  | 8.4h | 8.4h | 840 | 800 | 840 |
| 4 | 1.1.1.1 | Elaborar uma Pauta para a reunião e estudar domínio de Aplicação | manual | 0.88d | 2016-08-15 A | 2016-08-15 A |  | 100% |  |  | 2016-08-15 | 2016-08-15 | 0.88d | 2016-08-15 | 2016-08-15 |  | Karen; Luana; Regiane | 1h | 1h | 100 | 100 | 100 |
| 5 | 1.1.1.2 | Reunir-se com o Cliente | manual | 0.88d | 2016-08-16 A | 2016-08-16 A | 4 | 100% |  |  | 2016-08-16 | 2016-08-16 | 0.88d | 2016-08-16 | 2016-08-16 |  | Luana; Karen; Regiane | 1h | 1h | 100 | 100 | 100 |
| 6 | 1.1.1.3 | Redigir PTEC | manual | 3.14d | 2016-08-17 A | 2016-08-20 A | 5 | 100% |  |  | 2016-08-17 | 2016-08-20 | 3.12d | 2016-08-17 | 2016-08-20 |  | Regiane; Karen; Luana | 6h | 6h | 600 | 558 | 600 |
| 7 | 1.1.1.4 | Revisar PTEC | manual | 1.07d | 2016-08-30 A | 2016-08-30 A | 6 | 100% |  |  | 2016-08-30 | 2016-08-30 | 1.12d | 2016-08-30 | 2016-08-30 |  | Gerente de Projeto | 0.4h | 0.4h | 40 | 42 | 40 |
| 8 | 1.1.2 | **ETP - Estimativa de Tamanho Preliminar** |  | 2d | 2016-08-29 A | 2016-08-30 A | 3 | 100% |  |  | 2016-08-29 | 2016-08-30 | 2d | 2016-08-29 | 2016-08-30 |  |  | 1.7h | 1.7h | 170 | 150 | 170 |
| 9 | 1.1.2.1 | Elaborar ETP | manual | 1.57d | 2016-08-29 A | 2016-08-30 A |  | 100% |  |  | 2016-08-29 | 2016-08-30 | 1d | 2016-08-29 | 2016-08-30 |  | Regiane; Karen; Luana | 1.5h | 1.5h | 150 | 130 | 150 |
| 10 | 1.1.2.2 | Revisar ETP | manual | 0.02d | 2016-08-30 A | 2016-08-30 A | 9 | 100% |  |  | 2016-08-30 | 2016-08-30 | 0.02d | 2016-08-30 | 2016-08-30 |  | Regiane; Karen; Luana | 0.2h | 0.2h | 20 | 20 | 20 |
| 11 | 1.1.3 | **CRP e ORP - Cronograma e Orçamento Preliminares** |  | 6d | 2016-08-23 A | 2016-08-30 A |  | 100% |  |  | 2016-08-23 | 2016-08-30 | 6d | 2016-08-23 | 2016-08-30 |  |  | 2h | 2h | 200 | 200 | 200 |
| 12 | 1.1.3.1 | Elaborar CRP e ORP | manual | 2d | 2016-08-23 A | 2016-08-25 A |  | 100% |  |  | 2016-08-23 | 2016-08-25 | 2d | 2016-08-23 | 2016-08-25 |  | Regiane; Karen; Luana | 1.5h | 1.5h | 150 | 150 | 150 |
| 13 | 1.1.3.2 | Revisar CRP e ORP | manual | 0.88d | 2016-08-30 A | 2016-08-30 A | 12 | 100% |  |  | 2016-08-30 | 2016-08-30 | 0.88d | 2016-08-30 | 2016-08-30 |  | Regiane; Karen; Luana | 0.5h | 0.5h | 50 | 50 | 50 |
| 14 | 1.1.4 | **Aprovações - Prospecção** |  | 1.12d? | 2016-08-30 A | 2016-08-31 A |  | 100% |  |  | 2016-08-30 | 2016-08-31 | 1.12d? | 2016-08-30 | 2016-08-31 |  |  | 1h | 1h |  |  |  |
| 15 | 1.1.4.1 | Aprovar PTEC | manual | 0.12d | 2016-08-31 A | 2016-08-31 A | 7 | 100% |  |  | 2016-08-31 | 2016-08-31 | 0.12d | 2016-08-31 | 2016-08-31 |  | Cliente | 0.34h | 0.34h |  |  |  |
| 16 | 1.1.4.2 | Aprovar ETP |  | 0.04d? | 2016-08-30 A | 2016-08-30 A | 10SS | 100% |  |  | 2016-08-30 | 2016-08-30 | 0.04d? | 2016-08-30 | 2016-08-30 | finish no earlier than 2016-08-30 | Cliente | 0.33h | 0.33h |  |  |  |
| 17 | 1.1.4.3 | Aprovar CRP e ORP | manual | 1d | 2016-08-30 A | 2016-08-30 A | 13SS | 100% |  |  | 2016-08-30 | 2016-08-30 | 1d | 2016-08-30 | 2016-08-30 |  | Cliente | 0.33h | 0.33h |  |  |  |
| 18 | 1.2 | **Planejamento** |  | 40.88d | 2016-08-15 A | 2016-10-10 A |  | 100% |  |  | 2016-08-15 | 2016-10-10 | 40.88d | 2016-08-15 | 2016-10-10 |  |  | 19.3h | 19.3h | 1,830 | 1,687 | 1,830 |
| 19 | 1.2.1 | **EAP** |  | 36d | 2016-08-15 A | 2016-10-03 A |  | 100% |  |  | 2016-08-15 | 2016-10-03 | 36d | 2016-08-15 | 2016-10-03 |  |  | 1.5h | 1.5h | 150 | 150 | 150 |
| 20 | 1.2.1.1 | Elaborar EAP | manual | 10d | 2016-08-15 A | 2016-08-27 A |  | 100% |  |  | 2016-08-15 | 2016-08-27 | 10d | 2016-08-15 | 2016-08-27 |  | Vinícius | 1h | 1h | 100 | 100 | 100 |
| 21 | 1.2.1.2 | Revisar EAP | manual | 29.12d | 2016-08-24 A | 2016-10-03 A | 20 | 100% |  |  | 2016-08-24 | 2016-10-03 | 29.12d | 2016-08-24 | 2016-10-03 |  | Gerente de Projeto | 0.5h | 0.5h | 50 | 50 | 50 |
| 22 | 1.2.2 | **Plano de Projeto** |  | 12d | 2016-08-15 A | 2016-08-30 A |  | 100% |  |  | 2016-08-15 | 2016-08-30 | 12d | 2016-08-15 | 2016-08-30 |  |  | 7.5h | 7.5h | 750 | 657 | 750 |
| 23 | 1.2.2.1 | Elaborar plano de projeto | manual | 4.06d | 2016-08-15 A | 2016-08-19 A |  | 100% |  |  | 2016-08-15 | 2016-08-19 | 4d | 2016-08-15 | 2016-08-19 |  | Karen; Luana; Regiane; Vinícius; Pedro | 6h | 6h | 600 | 507 | 600 |
| 24 | 1.2.2.2 | Revisar plano de projeto | manual | 1d | 2016-08-30 A | 2016-08-30 A | 23 | 100% |  |  | 2016-08-30 | 2016-08-30 | 1d | 2016-08-30 | 2016-08-30 |  | Gerente de Projeto | 1.5h | 1.5h | 150 | 150 | 150 |

| ID | WBS | Task | Type | Duration | Start | Finish | Predecessors | Complete | Actual finish | Baseline start | Baseline finish | Baseline duration | Baseline 1 start | Baseline 1 finish | Resources | Work | Actual work | Cost | Baseline cost | Actual cost |
| --- | --- | --- | --- | --- | --- | --- | --- | --- | --- | --- | --- | --- | --- | --- | --- | --- | --- | --- | --- | --- |
| 25 | 1.2.3 | **ETD – Estimativa de Tamanho Definitiva** |  | 3d | 2016-08-29 A | 2016-08-31 A |  | 100% |  | 2016-08-29 | 2016-08-31 | 3d | 2016-08-29 | 2016-08-31 |  | 2.5h | 2.5h | 250 | 200 | 250 |
| 26 | 1.2.3.1 | Elaborar ETD | manual | 1.02d | 2016-08-29 A | 2016-08-30 A |  | 100% |  | 2016-08-29 | 2016-08-30 | 1d | 2016-08-29 | 2016-08-30 | Karen; Luana; Regiane | 2h | 2h | 200 | 150 | 200 |
| 27 | 1.2.3.2 | Revisar ETD | manual | 0.06d | 2016-08-31 A | 2016-08-31 A | 26 | 100% |  | 2016-08-31 | 2016-08-31 | 0.06d | 2016-08-31 | 2016-08-31 | Gerente de Projeto | 0.5h | 0.5h | 50 | 50 | 50 |
| 28 | 1.2.4 | **CRD e ORD – Cronograma e Orçamento Definitivo** |  | 30d | 2016-08-30 A | 2016-10-10 |  | 100% | 2016-10-06 | 2016-08-30 | 2016-10-10 | 30d | 2016-08-30 | 2016-10-10 |  | 6h | 6h | 600 | 600 | 600 |
| 29 | 1.2.4.1 | Elaborar CRD e ORD | manual | 7d | 2016-08-30 A | 2016-09-08 A |  | 100% |  | 2016-08-30 | 2016-09-08 | 7d | 2016-08-30 | 2016-09-08 | Karen | 5h | 5h | 500 | 500 | 500 |
| 30 | 1.2.4.2 | Revisar CRD e ORD | manual | 1d | 2016-10-05 A | 2016-10-06 A | 29 | 100% |  | 2016-10-05 | 2016-10-06 | 1d | 2016-10-05 | 2016-10-06 | Regiane | 1h | 1h | 100 | 100 | 100 |
| 31 | 1.2.5 | **Aprovações - Planejamento** |  | 34d | 2016-08-24 A | 2016-10-10 A |  | 100% |  | 2016-08-24 | 2016-10-10 | 34d | 2016-08-24 | 2016-10-10 |  | 1.8h | 1.8h | 80 | 80 | 80 |
| 32 | 1.2.5.1 | Aprovar EAP | manual | 29.12d | 2016-08-24 A | 2016-10-03 A | 21SS | 100% |  | 2016-08-24 | 2016-10-03 | 29.12d | 2016-08-24 | 2016-10-03 | Gerente de Projeto | 0.3h | 0.3h | 30 | 30 | 30 |
| 33 | 1.2.5.2 | Aprovar plano de projeto | manual | 30.12d | 2016-08-30 A | 2016-10-10 A | 24SS | 100% |  | 2016-08-30 | 2016-10-10 | 30.12d | 2016-08-30 | 2016-10-10 | Gerente de Projeto | 0.5h | 0.5h | 50 | 50 | 50 |
| 34 | 1.2.5.3 | Aprovar ETD | manual | 27.12d | 2016-09-01 A | 2016-10-10 A | 27 | 100% |  | 2016-09-01 | 2016-10-10 | 27.12d | 2016-09-01 | 2016-10-10 | Cliente | 0.5h | 0.5h |  |  |  |
| 35 | 1.2.5.4 | Aprovar CRD e ORD | manual | 1d | 2016-10-10 A | 2016-10-10 A | 29 | 100% |  | 2016-10-10 | 2016-10-10 | 1d | 2016-10-10 | 2016-10-10 | Cliente | 0.5h | 0.5h |  |  |  |
| 36 | 1.3 | **Análise** |  | 29.88d | 2016-08-30 A | 2016-10-10 |  | 100% | 2016-09-26 | 2016-08-30 | 2016-10-10 | 29.88d | 2016-08-30 | 2016-10-10 |  | 45.1h | 45.1h | 4,200 | 4,097 | 4,200 |
| 37 | 1.3.1 | **Documento de Requisitos** |  | 30d | 2016-08-30 A | 2016-10-10 |  | 100% | 2016-09-15 | 2016-08-30 | 2016-10-10 | 30d | 2016-08-30 | 2016-10-10 |  | 31h | 31h | 3,100 | 2,997 | 3,100 |
| 38 | 1.3.1.1 | Especificar Requisitos Funcionais de Sistema | manual | 2d | 2016-08-30 A | 2016-09-01 A |  | 100% |  | 2016-08-30 | 2016-09-01 | 2d | 2016-08-30 | 2016-09-01 | Karen; Luana; Regiane | 2h | 2h | 200 | 200 | 200 |
| 39 | 1.3.1.2 | Elaborar DRE | manual | 2.13d | 2016-09-06 A | 2016-09-08 A | 38 | 100% |  | 2016-09-06 | 2016-09-08 | 2.12d | 2016-09-06 | 2016-09-08 | Karen; Luana; Regiane | 26h | 26h | 2,600 | 2,597 | 2,600 |
| 40 | 1.3.1.3 | Realizar correções no DRE | manual | 2.04d | 2016-09-14 A | 2016-09-15 A | 43 | 100% |  | 2016-09-14 | 2016-09-15 | 2d | 2016-09-14 | 2016-09-15 | Karen; Luana; Regiane | 3h | 3h | 300 | 200 | 300 |
| 41 | 1.3.2 | **Checklist de Documento de Requisitos** |  | 8d | 2016-09-12 A | 2016-09-21 A |  | 100% |  | 2016-09-12 | 2016-09-21 | 8d | 2016-09-12 | 2016-09-21 |  | 3.1h | 3.1h |  |  |  |
| 42 | 1.3.2.1 | Analisar DRE | manual | 2d | 2016-09-12 A | 2016-09-13 A |  | 100% |  | 2016-09-12 | 2016-09-13 | 2d | 2016-09-12 | 2016-09-13 | Cliente | 1h | 1h |  |  |  |
| 43 | 1.3.2.2 | Desenvolver Checklist | manual | 1d | 2016-09-13 A | 2016-09-13 A | 42 | 100% |  | 2016-09-13 | 2016-09-13 | 1d | 2016-09-13 | 2016-09-13 | Cliente | 2h | 2h |  |  |  |
| 44 | 1.3.2.3 | Aprovar DRE | manual | 2.12d | 2016-09-20 A | 2016-09-21 A | 40 | 100% |  | 2016-09-20 | 2016-09-21 | 2.12d | 2016-09-20 | 2016-09-21 | Cliente | 0.1h | 0.1h |  |  |  |
| 45 | 1.3.3 | **Matriz de Rastreabilidade Bidirecional** |  | 16d | 2016-09-19 A | 2016-10-10 |  | 100% | 2016-09-26 | 2016-09-19 | 2016-10-10 | 16d | 2016-09-19 | 2016-10-10 |  | 11h | 11h | 1,100 | 1,100 | 1,100 |
| 46 | 1.3.3.1 | Analisar DRE | manual | 1d | 2016-09-19 A | 2016-09-20 A |  | 100% |  | 2016-09-19 | 2016-09-20 | 1d | 2016-09-19 | 2016-09-20 | Karen; Vinícius | 1h | 1h | 100 | 100 | 100 |
| 47 | 1.3.3.2 | Dispor graficamente os requisitos | manual | 1.88d | 2016-09-21 A | 2016-09-22 A | 46 | 100% |  | 2016-09-21 | 2016-09-22 | 1.88d | 2016-09-21 | 2016-09-22 | Vinícius | 3h | 3h | 300 | 300 | 300 |
| 48 | 1.3.3.3 | Estabelecer relações entre os requisitos | manual | 2d | 2016-09-21 A | 2016-09-22 A | 46 | 100% |  | 2016-09-21 | 2016-09-22 | 2d | 2016-09-21 | 2016-09-22 | Karen; Vinícius | 3h | 3h | 300 | 300 | 300 |
| 49 | 1.3.3.4 | Elaborar matriz de rastreabilidade | manual | 3d | 2016-09-21 A | 2016-09-26 A | 46 | 100% |  | 2016-09-21 | 2016-09-26 | 3d | 2016-09-21 | 2016-09-26 | Karen; Vinícius | 4h | 4h | 400 | 400 | 400 |

| ID | WBS | Task | Type | Duration | Start | Finish | Predecessors | Complete | Actual start | Actual finish | Baseline start | Baseline finish | Baseline duration | Baseline 1 start | Baseline 1 finish | Constraint | Resources | Work | Actual work | Cost | Baseline cost | Actual cost |
| --- | --- | --- | --- | --- | --- | --- | --- | --- | --- | --- | --- | --- | --- | --- | --- | --- | --- | --- | --- | --- | --- | --- |
| 50 | 1.4 | **Modelagem UML** |  | 10d | 2016-09-27 A | 2016-10-10 |  | 100% |  | 2016-09-27 | 2016-09-27 | 2016-10-10 | 10d | 2016-09-27 | 2016-10-10 |  |  | 5h | 5h | 500 | 367 | 500 |
| 51 | 1.4.1 | **DIC – Diagrama de Classes** |  | 6d | 2016-10-03 | 2016-10-10 |  | 100% | 2016-09-27 | 2016-09-27 | 2016-10-03 | 2016-10-10 | 6d | 2016-10-03 | 2016-10-10 |  |  | 1h | 1h | 100 | 100 | 100 |
| 52 | 1.4.1.1 | Elaborar diagrama de classes | manual | 0.04d | 2016-09-27 A | 2016-09-27 A | 45 | 100% |  |  | 2016-09-27 | 2016-09-27 | 0.04d | 2016-09-27 | 2016-09-27 |  | Karen; Vinícius | 1h | 1h | 100 | 100 | 100 |
| 53 | 1.4.2 | **MER – Modelo Entidade Relacionamento** |  | 6d | 2016-10-03 | 2016-10-10 |  | 100% | 2016-09-27 | 2016-09-27 | 2016-10-03 | 2016-10-10 | 6d | 2016-10-03 | 2016-10-10 |  |  | 4h | 4h | 400 | 267 | 400 |
| 54 | 1.4.2.1 | Elaborar MER | manual | 0.25d | 2016-09-27 A | 2016-09-27 A | 45 | 100% |  |  | 2016-09-27 | 2016-09-27 | 0.19d | 2016-09-27 | 2016-09-27 |  | Karen; Luana; Regiane; Vinícius | 4h | 4h | 400 | 267 | 400 |
| 55 | 1.5 | **Release 01** |  | 11d | 2016-10-10 A | 2016-10-24 A |  | 100% |  |  | 2016-10-26 | 2016-11-29 | 24.88d | 2016-10-10 | 2016-10-24 |  |  | 28.5h | 28.5h | 2,850.09 | 14,890 | 2,850.09 |
| 56 | 1.5.1 | **Implementação / Teste** |  | 11d | 2016-10-10 A | 2016-10-24 A |  | 100% |  |  | 2016-10-26 | 2016-11-29 | 24.88d | 2016-10-10 | 2016-10-24 |  |  | 28.5h | 28.5h | 2,850.09 | 14,890 | 2,850.09 |
| 57 | 1.5.1.1 | **Implementação** |  | 11d | 2016-10-10 A | 2016-10-24 A | 44 | 100% |  |  | 2016-10-26 | 2016-11-29 | 25d | 2016-10-10 | 2016-10-24 |  |  | 24.5h | 24.5h | 2,450.08 | 12,634 | 2,450.08 |
| 58 | 1.5.1.1.1 | **Código Fonte** |  | 11d | 2016-10-10 A | 2016-10-24 A |  | 100% |  |  | 2016-10-26 | 2016-11-29 | 25d | 2016-10-10 | 2016-10-24 |  |  | 24.5h | 24.5h | 2,450.08 | 12,634 | 2,450.08 |
| 59 | 1.5.1.1.1.1 | [RFS01] Cadastrar Usuário | manual | 9.96d | 2016-10-10 A | 2016-10-22 A |  | 100% |  |  | 2016-10-26 | 2016-10-26 | 0.79d | 2016-10-10 | 2016-10-24 |  | Karen | 4h | 4h | 400 | 1,052 | 400 |
| 60 | 1.5.1.1.1.2 | [RFS02] Consultar Usuário | manual | 11.05d | 2016-10-10 A | 2016-10-24 A |  | 100% |  |  | 2016-10-26 | 2016-10-26 | 0.79d | 2016-10-10 | 2016-10-24 |  | Luana; Karen | 4h | 4h | 400 | 1,052 | 400 |
| 61 | 1.5.1.1.1.3 | [RFS03] Alterar Usuário | manual | 10.02d | 2016-10-10 A | 2016-10-21 A |  | 100% |  |  | 2016-10-26 | 2016-10-26 | 0.79d | 2016-10-10 | 2016-10-24 |  | Regiane; Karen | 3h | 3h | 300 | 1,052 | 300 |
| 62 | 1.5.1.1.1.4 | [RFS04] Desativar Usuário | manual | 3.95d | 2016-10-10 A | 2016-10-14 A |  | 100% |  |  | 2016-10-26 | 2016-10-26 | 0.79d | 2016-10-10 | 2016-10-24 |  | Pedro; Karen | 1h | 1h | 100 | 1,052 | 100 |
| 63 | 1.5.1.1.1.5 | [RFS05] Cadastrar Projeto Candidato | manual | 11.05d | 2016-10-10 A | 2016-10-24 A |  | 100% |  |  | 2016-10-26 | 2016-10-26 | 0.79d | 2016-10-10 | 2016-10-24 |  | Luana; Vinícius | 4h | 4h | 400 | 1,052 | 400 |
| 64 | 1.5.1.1.1.6 | [RFS06] Listar Projetos Candidatos | manual | 10.74d | 2016-10-10 A | 2016-10-22 A |  | 100% |  |  | 2016-10-26 | 2016-10-26 | 0.79d | 2016-10-10 | 2016-10-24 |  | Regiane; Vinícius | 3h | 3h | 300 | 1,052 | 300 |
| 65 | 1.5.1.1.1.7 | [RFS07] Alterar Projetos Candidatos | manual | 11.05d | 2016-10-10 A | 2016-10-24 A |  | 100% |  |  | 2016-10-26 | 2016-10-26 | 0.79d | 2016-10-10 | 2016-10-24 |  | Karen; Vinícius | 4h | 4h | 400 | 1,052 | 400 |
| 66 | 1.5.1.1.1.8 | [RFS08] Remover Projeto Candidato | manual | 0.19d | 2016-10-10 A | 2016-10-10 A |  | 100% |  |  | 2016-10-26 | 2016-10-26 | 0.79d | 2016-10-10 | 2016-10-10 |  | Vinícius; Karen | 1.5h | 1.5h | 150.08 | 1,052 | 150.08 |
| 67 | 1.5.1.2 | **Teste** |  | 6d | 2016-10-17 | 2016-10-24 A | 57 | 100% | 2016-10-20 |  | 2016-11-01 | 2016-11-18 | 14d | 2016-10-17 | 2016-10-24 |  |  | 4h | 4h | 400 | 2,256 | 400 |
| 68 | 1.5.1.2.1 | **Casos de Teste (Selenium)** |  | 6d | 2016-10-17 | 2016-10-24 A |  | 100% | 2016-10-20 |  | 2016-11-01 | 2016-11-18 | 14d | 2016-10-17 | 2016-10-24 |  |  | 4h | 4h | 400 | 2,256 | 400 |
| 69 | 1.5.1.2.1.1 | [RFS01] Cadastrar Usuário | manual | 2.97d | 2016-10-20 A | 2016-10-23 A |  | 100% |  |  | 2016-11-01 | 2016-11-06 | 4d | 2016-10-20 | 2016-10-24 |  | Vinícius; Pedro | 0.5h | 0.5h | 50 | 188 | 50 |
| 70 | 1.5.1.2.1.2 | [RFS02] Consultar Usuário | manual | 2.97d | 2016-10-20 A | 2016-10-23 A |  | 100% |  |  | 2016-11-01 | 2016-11-06 | 4d | 2016-10-20 | 2016-10-24 |  | Vinícius; Pedro | 0.5h | 0.5h | 50 | 188 | 50 |
| 71 | 1.5.1.2.1.3 | [RFS03] Alterar Usuário |  | 0.06d | 2016-10-21 A | 2016-10-24 A |  | 100% |  |  | 2016-11-01 | 2016-11-06 | 4d | 2016-10-20 | 2016-10-24 | finish no earlier than 2016-10-24 | Regiane | 0.5h | 0.5h | 50 | 188 | 50 |
| 72 | 1.5.1.2.1.4 | [RFS04] Desativar Usuário | manual | 2.97d | 2016-10-20 A | 2016-10-23 A |  | 100% |  |  | 2016-11-01 | 2016-11-06 | 4d | 2016-10-20 | 2016-10-24 | start no earlier than 2016-10-20 | Luana; Pedro | 0.5h | 0.5h | 50 | 188 | 50 |
| 73 | 1.5.1.2.1.5 | [RFS05] Cadastrar Projeto Candidato | manual | 2.97d | 2016-10-20 A | 2016-10-23 A |  | 100% |  |  | 2016-11-01 | 2016-11-06 | 4d | 2016-10-20 | 2016-10-24 | start no earlier than 2016-10-20 | Karen; Pedro | 0.5h | 0.5h | 50 | 188 | 50 |
| 74 | 1.5.1.2.1.6 | [RFS06] Listar Projetos Candidatos | manual | 2.97d | 2016-10-20 A | 2016-10-23 A |  | 100% |  |  | 2016-11-01 | 2016-11-06 | 4d | 2016-10-20 | 2016-10-24 |  | Luana; Pedro | 0.5h | 0.5h | 50 | 188 | 50 |
| 75 | 1.5.1.2.1.7 | [RFS07] Alterar Projetos Candidatos | manual | 2.97d | 2016-10-20 A | 2016-10-23 A |  | 100% |  |  | 2016-11-01 | 2016-11-06 | 4d | 2016-10-20 | 2016-10-24 |  | Regiane; Pedro | 0.5h | 0.5h | 50 | 188 | 50 |
| 76 | 1.5.1.2.1.8 | [RFS08] Remover Projeto Candidato |  | 13.12d | 2016-10-20 A | 2016-10-24 A |  | 100% |  |  | 2016-11-01 | 2016-11-06 | 4d | 2016-10-20 | 2016-10-24 | finish no earlier than 2016-10-24 | Karen; Pedro | 0.5h | 0.5h | 50 | 188 | 50 |

| ID | WBS | Task | Type | Duration | Start | Finish | Predecessors | Complete | Remaining | Actual start | Baseline start | Baseline finish | Baseline duration | Baseline 1 start | Baseline 1 finish | Total slack | Constraint | Resources | Work | Actual work | Cost | Baseline cost | Actual cost |
| --- | --- | --- | --- | --- | --- | --- | --- | --- | --- | --- | --- | --- | --- | --- | --- | --- | --- | --- | --- | --- | --- | --- | --- |
| 77 | 1.6 | **Release 02** |  | 5d | 2016-10-25 A | 2016-10-31 |  | 98% | 0.12d |  |  |  |  | 2016-10-25 | 2016-10-31 |  |  |  | 41.9h | 40.8h | 4,190 |  | 4,079.79 |
| 78 | 1.6.1 | Mudança na implementação dos requisitos de Projeto Candidato | manual | 5d | 2016-10-25 A | 2016-10-31 |  | 60% | 2d |  |  |  |  |  |  |  |  | Vinícius | 8h | 6.9h | 800 |  | 689.8 |
| 79 | 1.6.2 | **Implementação / Teste** |  | 5d | 2016-10-25 A | 2016-10-31 A |  | 100% |  |  | 2016-10-26 | 2016-11-29 | 24.88d | 2016-10-25 | 2016-10-31 |  |  |  | 33.9h | 33.9h | 3,390 | 14,890 | 3,390 |
| 80 | 1.6.2.1 | **Implementação** |  | 5d | 2016-10-25 A | 2016-10-31 A | 44 | 100% |  |  | 2016-10-26 | 2016-11-29 | 25d | 2016-10-25 | 2016-10-31 |  |  |  | 31.6h | 31.6h | 3,160 | 12,634 | 3,160 |
| 81 | 1.6.2.1.1 | **Código Fonte** |  | 5d | 2016-10-25 A | 2016-10-31 A |  | 100% |  |  | 2016-10-26 | 2016-11-29 | 25d | 2016-10-25 | 2016-10-31 |  |  |  | 31.6h | 31.6h | 3,160 | 12,634 | 3,160 |
| 82 | 1.6.2.1.1.1 | [RFS09] Cadastrar Critério de Avaliação |  | 0.5d | 2016-10-25 A | 2016-10-31 A |  | 100% |  |  | 2016-10-26 | 2016-10-26 | 0.79d | 2016-10-25 | 2016-10-31 |  | finish no earlier than 2016-10-31 | Regiane | 4h | 4h | 400 | 1,052 | 400 |
| 83 | 1.6.2.1.1.2 | [RFS10] Listar Critérios de Avaliação |  | 0.45d | 2016-10-25 A | 2016-10-31 A |  | 100% |  |  | 2016-10-26 | 2016-10-26 | 0.79d | 2016-10-25 | 2016-10-31 |  | finish no earlier than 2016-10-31 | Regiane | 3.6h | 3.6h | 360 | 1,053 | 360 |
| 84 | 1.6.2.1.1.3 | [RFS11] Alterar Critérios de Avaliação | manual | 5.05d | 2016-10-25 A | 2016-10-31 A |  | 100% |  |  | 2016-10-26 | 2016-10-26 | 0.79d | 2016-10-25 | 2016-10-31 |  |  | Regiane | 4h | 4h | 400 | 1,053 | 400 |
| 85 | 1.6.2.1.1.4 | [RFS12] Desativar Critério de Avaliação |  | 19.12d | 2016-10-25 A | 2016-10-31 A |  | 100% |  |  |  |  |  | 2016-10-25 | 2016-10-31 |  | finish no earlier than 2016-10-31 | Regiane | 2h | 2h | 200 |  | 200 |
| 86 | 1.6.2.1.1.5 | [RFS13] Avaliar Projeto Candidato | manual | 5d | 2016-10-25 A | 2016-10-31 A |  | 100% |  |  |  |  |  | 2016-10-25 | 2016-10-31 |  |  | Vinícius | 10h | 10h | 1,000 |  | 1,000 |
| 87 | 1.6.2.1.1.6 | [RFS14] Consultar Avaliação do Projeto Candidato | manual | 0.5d | 2016-10-25 A | 2016-10-31 A |  | 100% |  |  |  |  |  | 2016-10-25 | 2016-10-31 |  |  | Vinícius | 5h | 5h | 500 |  | 500 |
| 88 | 1.6.2.1.1.7 | [RFS15] Alterar Avaliação do Projeto Candidato | manual | 3.88d | 2016-10-25 A | 2016-10-31 A |  | 100% |  |  |  |  |  | 2016-10-25 | 2016-10-31 |  |  | Vinícius | 3h | 3h | 300 |  | 300 |
| 89 | 1.6.2.2 | **Teste** |  | 5d | 2016-10-25 A | 2016-10-31 A | 80 | 100% |  |  | 2016-11-01 | 2016-11-18 | 14d | 2016-10-25 | 2016-10-31 |  |  |  | 2.3h | 2.3h | 230 | 2,256 | 230 |
| 90 | 1.6.2.2.1 | **Casos de Teste (Selenium)** |  | 5d | 2016-10-25 A | 2016-10-31 A |  | 100% |  |  | 2016-11-01 | 2016-11-18 | 14d | 2016-10-25 | 2016-10-31 |  |  |  | 2.3h | 2.3h | 230 | 2,256 | 230 |
| 91 | 1.6.2.2.1.1 | [RFS09] Cadastrar Critério de Avaliação |  | 12.1d | 2016-10-25 A | 2016-10-31 A |  | 100% |  |  | 2016-11-01 | 2016-11-06 | 4d | 2016-10-25 | 2016-10-31 |  | finish no earlier than 2016-10-31 | Pedro | 0.5h | 0.5h | 50 | 188 | 50 |
| 92 | 1.6.2.2.1.2 | [RFS10] Listar Critérios de Avaliação | manual | 5d | 2016-10-25 A | 2016-10-31 A |  | 100% |  |  | 2016-11-01 | 2016-11-06 | 4d | 2016-10-25 | 2016-10-31 |  |  | Pedro | 0.3h | 0.3h | 30 | 188 | 30 |
| 93 | 1.6.2.2.1.3 | [RFS11] Alterar Critérios de Avaliação | manual | 5d | 2016-10-25 A | 2016-10-31 A |  | 100% |  |  | 2016-11-01 | 2016-11-06 | 4d | 2016-10-25 | 2016-10-31 |  |  | Vinícius | 0.3h | 0.3h | 30 | 188 | 30 |
| 94 | 1.6.2.2.1.4 | [RFS12] Desativar Critério de Avaliação | manual | 5d | 2016-10-25 A | 2016-10-31 A |  | 100% |  |  | 2016-11-01 | 2016-11-06 | 4d | 2016-10-25 | 2016-10-31 |  | start no earlier than 2016-10-25 | Vinícius | 0.3h | 0.3h | 30 | 188 | 30 |
| 95 | 1.6.2.2.1.5 | [RFS13] Avaliar Projeto Candidato | manual | 5d | 2016-10-25 A | 2016-10-31 A |  | 100% |  |  |  |  |  | 2016-10-25 | 2016-10-31 |  |  | Regiane | 0.3h | 0.3h | 30 |  | 30 |
| 96 | 1.6.2.2.1.6 | [RFS14] Consultar Avaliação do Projeto Candidato | manual | 5d | 2016-10-25 A | 2016-10-31 A |  | 100% |  |  |  |  |  | 2016-10-25 | 2016-10-31 |  |  | Luana | 0.3h | 0.3h | 30 |  | 30 |
| 97 | 1.6.2.2.1.7 | [RFS15] Alterar Avaliação do Projeto Candidato | manual | 5d | 2016-10-25 A | 2016-10-31 A |  | 100% |  |  |  |  |  | 2016-10-25 | 2016-10-31 |  |  | Karen | 0.3h | 0.3h | 30 |  | 30 |
| 98 | 1.7 | **Release 03** |  | 9.88d | 2016-10-25 A | 2016-11-07 |  |  | 9.88d |  | 2016-10-26 | 2016-11-29 | 24.88d | 2016-11-01 | 2016-11-07 | 0d |  |  | 46.7h |  | 4,670 | 14,890 |  |
| 99 | 1.7.1 | **Implementação / Teste** |  | 5d | 2016-11-01 | 2016-11-07 |  |  | 5d | 2016-10-25 | 2016-10-26 | 2016-11-29 | 24.88d | 2016-11-01 | 2016-11-07 |  |  |  | 46.7h |  | 4,670 | 14,890 |  |
| 100 | 1.7.1.1 | **Implementação** |  | 5d | 2016-11-01 | 2016-11-07 | 44 |  | 5d | 2016-10-25 | 2016-10-26 | 2016-11-29 | 25d | 2016-11-01 | 2016-11-07 |  |  |  | 39.75h |  | 3,975 | 12,634 |  |
| 101 | 1.7.1.1.1 | **Código Fonte** |  | 5d | 2016-11-01 | 2016-11-07 |  |  | 5d | 2016-10-25 | 2016-10-26 | 2016-11-29 | 25d | 2016-11-01 | 2016-11-07 |  |  |  | 39.75h |  | 3,975 | 12,634 |  |
| 102 | 1.7.1.1.1.1 | [RFS18] Alterar Valor de Repasse Financeiro | manual | 5d | 2016-10-25 A | 2016-10-31 |  |  | 5d |  |  |  |  | 2016-10-25 | 2016-10-31 |  |  | Luana | 3.55h |  | 355 |  |  |
| 103 | 1.7.1.1.1.2 | [RFS17] Consultar Valor de Repasse Financeiro | manual | 5d | 2016-10-25 A | 2016-10-31 |  |  | 5d |  |  |  |  | 2016-10-25 | 2016-10-31 |  |  | Karen | 3.62h |  | 362 |  |  |
| 104 | 1.7.1.1.1.3 | [RFS16] Cadastrar Valor de Repasse Financeiro | manual | 5d | 2016-10-25 A | 2016-10-31 |  |  | 5d |  |  |  |  | 2016-10-25 | 2016-10-31 |  |  | Vinícius | 3.62h |  | 362 |  |  |
| 105 | 1.7.1.1.1.4 | [RFS19] Aprovar Projeto Candidato | manual | 5d | 2016-11-01 | 2016-11-07 |  |  |  |  |  |  |  | 2016-11-01 | 2016-11-07 |  |  | Regiane | 3.62h |  | 362 |  |  |
| 106 | 1.7.1.1.1.5 | [RFS20] Consultar Projeto Aprovado | manual | 5d | 2016-11-01 | 2016-11-07 |  |  |  |  |  |  |  | 2016-11-01 | 2016-11-07 |  |  | Pedro | 3.62h |  | 362 |  |  |
| 107 | 1.7.1.1.1.6 | [RFS21] Finalizar Projeto Aprovado | manual | 5d | 2016-11-01 | 2016-11-07 |  |  |  |  |  |  |  | 2016-11-01 | 2016-11-07 |  |  | Luana | 3.62h |  | 362 |  |  |
| 108 | 1.7.1.1.1.7 | [RFS22] Cadastrar Cotas de Financiamento | manual | 5d | 2016-11-01 | 2016-11-07 |  |  |  |  |  |  |  | 2016-11-01 | 2016-11-07 |  |  | Regiane | 3.62h |  | 362 |  |  |
| 109 | 1.7.1.1.1.8 | [RFS23] Consultar Cotas de Financiamento | manual | 5d | 2016-11-01 | 2016-11-07 |  |  |  |  |  |  |  | 2016-11-01 | 2016-11-07 |  |  | Karen | 3.62h |  | 362 |  |  |
| 110 | 1.7.1.1.1.9 | [RFS24] Inserir Edital | manual | 5d | 2016-11-01 | 2016-11-07 |  |  |  |  |  |  |  | 2016-11-01 | 2016-11-07 |  |  | Vinícius | 3.62h |  | 362 |  |  |
| 111 | 1.7.1.1.1.10 | [RFS25] Consultar Edital | manual | 5d | 2016-11-01 | 2016-11-07 |  |  |  |  |  |  |  | 2016-11-01 | 2016-11-07 |  |  | Karen | 3.62h |  | 362 |  |  |
| 112 | 1.7.1.1.1.11 | [RFS26] Retificar Edital | manual | 5d | 2016-11-01 | 2016-11-07 |  |  |  |  |  |  |  | 2016-11-01 | 2016-11-07 |  |  | Luana | 3.62h |  | 362 |  |  |

| ID | WBS | Task | Type | Duration | Start | Finish | Predecessors | Remaining | Actual start | Baseline start | Baseline finish | Baseline duration | Baseline 1 start | Baseline 1 finish | Resources | Work | Cost | Baseline cost |
| --- | --- | --- | --- | --- | --- | --- | --- | --- | --- | --- | --- | --- | --- | --- | --- | --- | --- | --- |
| 113 | 1.7.1.2 | **Teste** |  | 5d | 2016-11-01 | 2016-11-07 | 100 | 5d | 2016-10-25 | 2016-11-01 | 2016-11-18 | 14d | 2016-11-01 | 2016-11-07 |  | 6.95h | 695 | 2,256 |
| 114 | 1.7.1.2.1 | **Casos de Teste (Selenium)** |  | 5d | 2016-11-01 | 2016-11-07 |  | 5d | 2016-10-25 | 2016-11-01 | 2016-11-18 | 14d | 2016-11-01 | 2016-11-07 |  | 6.95h | 695 | 2,256 |
| 115 | 1.7.1.2.1.1 | [RFS16] Cadastrar Valor de Repasse Financeiro | manual | 5d | 2016-10-25 A | 2016-10-31 |  | 5d |  |  |  |  | 2016-10-25 | 2016-10-31 | Luana | 0.63h | 63 |  |
| 116 | 1.7.1.2.1.2 | [RFS17] Consultar Valor de Repasse Financeiro | manual | 5d | 2016-10-25 A | 2016-10-31 |  | 5d |  |  |  |  | 2016-10-25 | 2016-10-31 | Regiane | 0.63h | 63 |  |
| 117 | 1.7.1.2.1.3 | [RFS18] Alterar Valor de Repasse Financeiro | manual | 5d | 2016-10-25 A | 2016-10-31 |  | 5d |  |  |  |  | 2016-10-25 | 2016-10-31 | Karen | 0.63h | 63 |  |
| 118 | 1.7.1.2.1.4 | [RFS19] Aprovar Projeto Candidato | manual | 5d | 2016-11-01 | 2016-11-07 |  |  |  |  |  |  | 2016-11-01 | 2016-11-07 | Pedro | 0.63h | 63 |  |
| 119 | 1.7.1.2.1.5 | [RFS20] Consultar Projeto Aprovado | manual | 5d | 2016-11-01 | 2016-11-07 |  |  |  |  |  |  | 2016-11-01 | 2016-11-07 | Pedro | 0.63h | 63 |  |
| 120 | 1.7.1.2.1.6 | [RFS21] Finalizar Projeto Aprovado | manual | 5d | 2016-11-01 | 2016-11-07 |  |  |  |  |  |  | 2016-11-01 | 2016-11-07 | Vinícius | 0.63h | 63 |  |
| 121 | 1.7.1.2.1.7 | [RFS22] Cadastrar Cotas de Financiamento | manual | 5d | 2016-11-01 | 2016-11-07 |  |  |  |  |  |  | 2016-11-01 | 2016-11-07 | Vinícius | 0.63h | 63 |  |
| 122 | 1.7.1.2.1.8 | [RFS23] Consultar Cotas de Financiamento | manual | 5d | 2016-11-01 | 2016-11-07 |  |  |  |  |  |  | 2016-11-01 | 2016-11-07 | Regiane | 0.63h | 63 |  |
| 123 | 1.7.1.2.1.9 | [RFS24] Inserir Edital | manual | 5d | 2016-11-01 | 2016-11-07 |  |  |  |  |  |  | 2016-11-01 | 2016-11-07 | Luana | 0.63h | 63 |  |
| 124 | 1.7.1.2.1.10 | [RFS25] Consultar Edital | manual | 5d | 2016-11-01 | 2016-11-07 |  |  |  |  |  |  | 2016-11-01 | 2016-11-07 | Karen | 0.65h | 65 |  |
| 125 | 1.7.1.2.1.11 | [RFS26] Retificar Edital | manual | 5d | 2016-11-01 | 2016-11-07 |  |  |  |  |  |  | 2016-11-01 | 2016-11-07 | Luana | 0.63h | 63 |  |
| 126 | 1.8 | **Release 04** |  | 10d | 2016-11-08 | 2016-11-21 |  |  |  | 2016-10-26 | 2016-11-29 | 24.88d | 2016-11-08 | 2016-11-21 |  | 38.25h | 3,825 | 14,890 |
| 127 | 1.8.1 | **Implementação / Teste** |  | 10d | 2016-11-08 | 2016-11-21 |  |  |  | 2016-10-26 | 2016-11-29 | 24.88d | 2016-11-08 | 2016-11-21 |  | 38.25h | 3,825 | 14,890 |
| 128 | 1.8.1.1 | **Implementação** |  | 10d | 2016-11-08 | 2016-11-21 | 44 |  |  | 2016-10-26 | 2016-11-29 | 25d | 2016-11-08 | 2016-11-21 |  | 32.58h | 3,258 | 12,634 |
| 129 | 1.8.1.1.1 | **Código Fonte** |  | 10d | 2016-11-08 | 2016-11-21 |  |  |  | 2016-10-26 | 2016-11-29 | 25d | 2016-11-08 | 2016-11-21 |  | 32.58h | 3,258 | 12,634 |
| 130 | 1.8.1.1.1.1 | [RFS27] Definir Restrições para Financiamento de Projetos | manual | 10d | 2016-11-08 | 2016-11-21 |  |  |  |  |  |  | 2016-11-08 | 2016-11-21 | Regiane | 3.62h | 362 |  |
| 131 | 1.8.1.1.1.2 | [RFS28] Financiar Projeto | manual | 10d | 2016-11-08 | 2016-11-21 |  |  |  |  |  |  | 2016-11-08 | 2016-11-21 | Pedro | 3.62h | 362 |  |
| 132 | 1.8.1.1.1.3 | [RFS29] Consultar Financiamento | manual | 10d | 2016-11-08 | 2016-11-21 |  |  |  |  |  |  | 2016-11-08 | 2016-11-21 | Luana | 3.62h | 362 |  |
| 133 | 1.8.1.1.1.4 | [RFS30] Atribuir Recompensa | manual | 10d | 2016-11-08 | 2016-11-21 |  |  |  |  |  |  | 2016-11-08 | 2016-11-21 | Regiane | 3.62h | 362 |  |
| 134 | 1.8.1.1.1.5 | [RFS31] Consultar Recompensa | manual | 10d | 2016-11-08 | 2016-11-21 |  |  |  |  |  |  | 2016-11-08 | 2016-11-21 | Karen | 3.62h | 362 |  |
| 135 | 1.8.1.1.1.6 | [RFS32] Alterar Recompensa | manual | 10d | 2016-11-08 | 2016-11-21 |  |  |  |  |  |  | 2016-11-08 | 2016-11-21 | Vinícius | 3.62h | 362 |  |
| 136 | 1.8.1.1.1.7 | [RFS33] Excluir Recompensa | manual | 10d | 2016-11-08 | 2016-11-21 |  |  |  |  |  |  | 2016-11-08 | 2016-11-21 | Karen | 3.62h | 362 |  |
| 137 | 1.8.1.1.1.8 | [RFS34] Gerar Relatório dos Projetos por Categoria | manual | 10d | 2016-11-08 | 2016-11-21 |  |  |  |  |  |  | 2016-11-08 | 2016-11-21 | Luana | 3.62h | 362 |  |
| 138 | 1.8.1.1.1.9 | [RFS35] Gerar Relatório de Investimentos Financeiros | manual | 10d | 2016-11-08 | 2016-11-21 |  |  |  | 2016-10-26 | 2016-10-26 | 0.79d | 2016-11-08 | 2016-11-21 | Regiane | 3.62h | 362 | 1,060 |

| ID | WBS | Task | Type | Duration | Start | Finish | Predecessors | Complete | Actual finish | Baseline start | Baseline finish | Baseline duration | Baseline 1 start | Baseline 1 finish | Resources | Work | Actual work | Cost | Baseline cost | Actual cost |
| --- | --- | --- | --- | --- | --- | --- | --- | --- | --- | --- | --- | --- | --- | --- | --- | --- | --- | --- | --- | --- |
| 139 | 1.8.1.2 | **Teste** |  | 10d | 2016-11-08 | 2016-11-21 | 128 |  |  | 2016-11-01 | 2016-11-18 | 14d | 2016-11-08 | 2016-11-21 |  | 5.67h |  | 567 | 2,256 |  |
| 140 | 1.8.1.2.1 | **Casos de Teste (Selenium)** |  | 10d | 2016-11-08 | 2016-11-21 |  |  |  | 2016-11-01 | 2016-11-18 | 14d | 2016-11-08 | 2016-11-21 |  | 5.67h |  | 567 | 2,256 |  |
| 141 | 1.8.1.2.1.1 | [RFS27] Definir Restrições para Financiamento de Projetos | manual | 10d | 2016-11-08 | 2016-11-21 |  |  |  |  |  |  | 2016-11-08 | 2016-11-21 | Regiane | 0.63h |  | 63 |  |  |
| 142 | 1.8.1.2.1.2 | [RFS28] Financiar Projeto | manual | 10d | 2016-11-08 | 2016-11-21 |  |  |  |  |  |  | 2016-11-08 | 2016-11-21 | Karen | 0.63h |  | 63 |  |  |
| 143 | 1.8.1.2.1.3 | [RFS29] Consultar Financiamento | manual | 10d | 2016-11-08 | 2016-11-21 |  |  |  |  |  |  | 2016-11-08 | 2016-11-21 | Pedro | 0.63h |  | 63 |  |  |
| 144 | 1.8.1.2.1.4 | [RFS30] Atribuir Recompensa | manual | 10d | 2016-11-08 | 2016-11-21 |  |  |  |  |  |  | 2016-11-08 | 2016-11-21 | Pedro | 0.63h |  | 63 |  |  |
| 145 | 1.8.1.2.1.5 | [RFS31] Consultar Recompensa | manual | 10d | 2016-11-08 | 2016-11-21 |  |  |  |  |  |  | 2016-11-08 | 2016-11-21 | Karen | 0.63h |  | 63 |  |  |
| 146 | 1.8.1.2.1.6 | [RFS32] Alterar Recompensa | manual | 10d | 2016-11-08 | 2016-11-21 |  |  |  |  |  |  | 2016-11-08 | 2016-11-21 | Pedro | 0.63h |  | 63 |  |  |
| 147 | 1.8.1.2.1.7 | [RFS33] Excluir Recompensa | manual | 10d | 2016-11-08 | 2016-11-21 |  |  |  |  |  |  | 2016-11-08 | 2016-11-21 | Regiane | 0.63h |  | 63 |  |  |
| 148 | 1.8.1.2.1.8 | [RFS34] Gerar Relatório dos Projetos por Categoria | manual | 10d | 2016-11-08 | 2016-11-21 |  |  |  |  |  |  | 2016-11-08 | 2016-11-21 | Luana | 0.63h |  | 63 |  |  |
| 149 | 1.8.1.2.1.9 | [RFS35] Gerar Relatório de Investimentos Financeiros | manual | 10d | 2016-11-08 | 2016-11-21 |  |  |  |  |  |  | 2016-11-08 | 2016-11-21 | Luana | 0.63h |  | 63 |  |  |
| 150 | 1.9 | **Implantação** |  | 15d | 2016-11-01 | 2016-11-21 |  |  |  | 2016-11-01 | 2016-11-18 | 14d | 2016-11-01 | 2016-11-21 |  | 3.67h |  | 367 | 367 |  |
| 151 | 1.9.1 | **PIM - Plano de Implantação** |  | 14d | 2016-11-01 | 2016-11-18 |  |  |  | 2016-11-01 | 2016-11-18 | 14d | 2016-11-01 | 2016-11-18 |  | 3.67h |  | 367 | 367 |  |
| 152 | 1.9.1.1 | Elaborar PIM | manual | 4d | 2016-11-01 | 2016-11-05 |  |  |  | 2016-11-01 | 2016-11-05 | 4d | 2016-11-01 | 2016-11-05 | Karen; Luana; Regiane | 2h |  | 200 | 200 |  |
| 153 | 1.9.1.2 | Revisar PIM | manual | 1d | 2016-11-16 | 2016-11-17 | 152 |  |  | 2016-11-16 | 2016-11-17 | 1d | 2016-11-16 | 2016-11-17 | Karen; Luana; Regiane | 1h |  | 100 | 100 |  |
| 154 | 1.9.1.3 | Aprovar PIM | manual | 0.88d | 2016-11-18 | 2016-11-18 | 153 |  |  | 2016-11-18 | 2016-11-18 | 1d | 2016-11-18 | 2016-11-18 | Gerente de Projeto | 0.67h |  | 67 | 67 |  |
| 155 | 1.10 | **Fechamento** |  | 0d | 2016-11-21 | 2016-11-21 |  |  |  | 2016-11-29 | 2016-11-29 | 0.88d | 2016-11-21 | 2016-11-21 |  | 5.97h |  | 597 | 596 |  |
| 156 | 1.10.1 | **DLA – Documento de Lições Aprendidas** |  | 0d | 2016-11-21 | 2016-11-21 |  |  |  | 2016-11-29 | 2016-11-29 | 1d | 2016-11-29 | 2016-11-29 |  | 5.97h |  | 597 | 596 |  |
| 157 | 1.10.1.1 | Elaborar DLA | manual | 0.37d | 2016-11-21 | 2016-11-21 |  |  |  | 2016-11-29 | 2016-11-29 | 0.88d | 2016-11-29 | 2016-11-29 | Pedro; Vinícius | 5.97h |  | 597 | 596 |  |
| 159 | 1.11 | **Monitoramento e Controle** |  | 71d | 2016-08-15 A | 2016-11-21 |  | 100% | 2016-11-03 | 2016-08-15 | 2016-11-30 | 77.88d | 2016-08-15 | 2016-11-21 |  | 18.15h | 18.15h | 1,815 | 1,815 | 1,815 |
| 160 | 1.11.1 | **PPR – Plano de Projetos** |  | 60d | 2016-08-15 A | 2016-11-04 |  | 100% | 2016-11-03 | 2016-08-15 | 2016-11-30 | 78d | 2016-08-15 | 2016-11-04 |  | 13.15h | 13.15h | 1,315 | 1,315 | 1,315 |
| 161 | 1.11.1.1 | Elaborar PPR | manual | 1.91d | 2016-08-15 A | 2016-08-17 A |  | 100% |  | 2016-08-15 | 2016-08-17 | 1.91d | 2016-08-15 | 2016-08-17 | Pedro; Vinícius; Karen; Luana | 12.6h | 12.6h | 1,260 | 1,260 | 1,260 |
| 162 | 1.11.1.2 | Revisar PPR | manual | 0.04d | 2016-11-03 A | 2016-11-03 A | 161 | 100% |  | 2016-11-30 | 2016-11-30 | 0.04d | 2016-11-03 | 2016-11-03 | Regiane | 0.55h | 0.55h | 55 | 55 | 55 |
| 163 | 1.11.2 | **SRR – Status Report da Release** |  | 71d | 2016-08-15 A | 2016-11-21 |  | 100% | 2016-08-15 | 2016-08-15 | 2016-11-29 | 77d | 2016-08-15 | 2016-11-21 |  | 5h | 5h | 500 | 500 | 500 |
| 164 | 1.11.2.1 | Elaborar SRR | manual | 0.5d | 2016-08-15 A | 2016-08-15 A |  | 100% |  | 2016-08-15 | 2016-08-15 | 0.04d | 2016-08-15 | 2016-11-21 | Pedro | 5h | 5h | 500 | 500 | 500 |

| ID | WBS | Task | Type | Duration | Start | Finish | Complete | Remaining | Baseline start | Baseline finish | Baseline duration | Baseline 1 start | Baseline 1 finish | Total slack | Resources | Work | Actual work | Cost | Baseline cost | Actual cost |
| --- | --- | --- | --- | --- | --- | --- | --- | --- | --- | --- | --- | --- | --- | --- | --- | --- | --- | --- | --- | --- |
| 165 | 1.12 | **Gerência de Configuração** |  | 71d | 2016-08-15 A | 2016-11-21 | 40% | 42.6d | 2016-08-15 | 2016-08-15 | 0.12d | 2016-08-15 | 2016-11-21 |  |  | 3.68h | 1.47h | 368 | 368 | 147.2 |
| 166 | 1.12.1 | **PGC – Plano de Gerência de Configuração** |  | 0.12d | 2016-08-15 A | 2016-08-15 | 40% | 0.07d | 2016-08-15 | 2016-08-15 | 0.12d | 2016-08-15 | 2016-08-15 | 0d |  | 3.68h | 1.47h | 368 | 368 | 147.2 |
| 167 | 1.12.1.1 | Elaborar PGC | manual | 0.12d | 2016-08-15 A | 2016-08-15 | 40% | 0.07d | 2016-08-15 | 2016-08-15 | 0.12d | 2016-08-15 | 2016-08-15 |  | Karen; Luana; Regiane; Pedro; Vinícius | 3.68h | 1.47h | 368 | 368 | 147.2 |
| 168 | 1.13 | **Controle de Mudanças** |  | 71d | 2016-08-15 A | 2016-11-21 | 50% | 35.5d | 2016-08-15 | 2016-11-29 | 76.88d | 2016-08-15 | 2016-11-21 |  |  | 9.53h | 5.55h | 953 | 953 | 555.42 |
| 169 | 1.13.1 | **RSL – Registro de Solicitação de Mudanças** |  | 71d | 2016-08-15 A | 2016-11-21 | 50% | 35.5d | 2016-08-15 | 2016-11-29 | 77d | 2016-08-15 | 2016-11-21 |  |  | 9.53h | 5.55h | 953 | 953 | 555.42 |
| 170 | 1.13.1.1 | Registrar mudanças | manual | 71d | 2016-08-15 A | 2016-11-21 | 50% | 35.5d | 2016-08-15 | 2016-08-16 | 0.98d | 2016-08-15 | 2016-08-16 |  | Karen; Luana; Regiane; Pedro; Vinícius | 9.53h | 5.55h | 953 | 953 | 555.42 |
